# Gantt_PT4_EquipeA2

Schedule from MS Project, 2022-02-02 to 2022-04-12, 7 hours a day, A marks actual dates.
IUT de Bordeaux

## Calendars

- Standard: Mon-Fri 09:00-12:00, 14:00-18:00; Sat-Sun off. Exceptions (off unless hours are given): 2022-03-26 09:00-12:00, 14:00-18:00.

## Schedule

| ID | WBS | Task | Type | Duration | Start | Finish | Predecessors | Complete | Remaining | Baseline start | Baseline finish | Baseline duration | Baseline 1 start | Baseline 1 finish | Total slack | Constraint |
| --- | --- | --- | --- | --- | --- | --- | --- | --- | --- | --- | --- | --- | --- | --- | --- | --- |
| 1 | 1 | **Application backend** |  | 27d | 2022-02-03 A | 2022-03-11 |  | 61% | 10.66d | 2022-02-03 | 2022-03-08 | 24d | 2022-02-03 | 2022-03-08 | 23d |  |
| 2 | 1.1 | **Architecture base de données** |  | 20d | 2022-02-03 A | 2022-03-02 A |  | 100% |  | 2022-02-03 | 2022-02-24 | 16d | 2022-02-03 | 2022-02-24 |  |  |
| 3 | 1.1.1 | Mise en place de la Base de données |  | 9d | 2022-02-03 A | 2022-02-15 A |  | 100% |  | 2022-02-03 | 2022-02-15 | 9d | 2022-02-03 | 2022-02-15 |  | finish no earlier than 2022-02-07 |
| 4 | 1.1.2 | Créer les triggers pour générer les logs |  | 11d | 2022-02-15 A | 2022-03-02 A | 3 | 100% |  | 2022-02-15 | 2022-02-24 | 7d | 2022-02-15 | 2022-02-24 |  |  |
| 5 | 1.1.3 | Connexion à la base de données | milestone | 0d | 2022-02-15 A | 2022-02-15 A | 3 | 100% |  | 2022-02-15 | 2022-02-15 | 0d | 2022-02-15 | 2022-02-15 |  |  |
| 6 | 1.1.4 | Insérer des données dans la base et tests via triggers |  | 3d | 2022-02-15 A | 2022-02-18 A | 5 | 100% |  | 2022-02-16 | 2022-02-21 | 4d | 2022-02-16 | 2022-02-21 |  | finish no earlier than 2022-02-10 |
| 7 | 1.2 | **Création de chaque module** |  | 19d | 2022-02-15 A | 2022-03-11 | 5 | 51% | 9.35d | 2022-02-15 | 2022-03-08 | 16d | 2022-02-15 | 2022-03-08 | 23d |  |
| 8 | 1.2.1 | Développper le module de gestion Utilisateur |  | 10d | 2022-02-15 A | 2022-03-01 |  | 90% | 1d | 2022-02-15 | 2022-03-01 | 10d | 2022-02-15 | 2022-03-01 | 31d |  |
| 9 | 1.2.2 | Développer le module d'historique de données client |  | 10d | 2022-02-18 A | 2022-03-03 |  | 75% | 2.5d | 2022-02-16 | 2022-03-01 | 10d | 2022-02-16 | 2022-03-01 | 29d | finish no earlier than 2022-02-25 |
| 10 | 1.2.3 | Développer le module de gestion de reservation |  | 10d | 2022-02-28 A | 2022-03-11 |  | 85% | 1.5d | 2022-02-16 | 2022-03-01 | 10d | 2022-02-16 | 2022-03-01 | 23d | finish no earlier than 2022-02-25 |
| 11 | 1.2.4 | Développer le module de facturtion client |  | 10d | 2022-02-16 | 2022-03-01 |  |  |  | 2022-02-16 | 2022-03-01 | 10d | 2022-02-16 | 2022-03-01 | 31d | finish no earlier than 2022-02-25 |
| 12 | 1.2.5 | Développer le module de gestion des stocks |  | 10d | 2022-02-15 A | 2022-03-01 |  | 20% | 8d | 2022-02-15 | 2022-03-01 | 10d | 2022-02-15 | 2022-03-01 | 31d | finish no earlier than 2022-02-25 |
| 13 | 1.2.6 | Développer le module de gestion des incidents |  | 10d | 2022-02-16 A | 2022-03-01 |  | 25% | 7.5d | 2022-02-16 | 2022-03-01 | 10d | 2022-02-16 | 2022-03-01 | 31d | finish no earlier than 2022-02-25 |
| 14 | 1.2.7 | Développer le module de recherche client |  | 10d | 2022-02-18 A | 2022-03-03 |  | 75% | 2.5d | 2022-02-16 | 2022-03-01 | 10d | 2022-02-16 | 2022-03-01 | 29d | finish no earlier than 2022-02-25 |
| 15 | 1.2.8 | Développer le module de gestion de l'entretien |  | 10d | 2022-02-16 A | 2022-03-01 |  | 25% | 7.5d | 2022-02-16 | 2022-03-01 | 10d | 2022-02-16 | 2022-03-01 | 31d | finish no earlier than 2022-02-25 |
| 16 | 1.2.9 | Développer le module de gestion admin |  | 10d | 2022-02-16 A | 2022-03-01 |  | 80% | 2d | 2022-02-16 | 2022-03-01 | 10d | 2022-02-16 | 2022-03-01 | 31d | finish no earlier than 2022-02-25 |
| 17 | 1.2.10 | Développer des jeux de test |  | 3.5d | 2022-02-21 | 2022-02-24 | 6, 4 |  |  | 2022-03-04 | 2022-03-08 | 3d | 2022-03-04 | 2022-03-08 | 34.5d | start no earlier than 2022-02-20 |
| 18 | 2 | **Application Frontend (UX)** |  | 36d | 2022-02-02 A | 2022-03-23 |  | 49% | 18.32d | 2022-02-02 | 2022-03-10 | 27d | 2022-02-02 | 2022-03-10 | 15d |  |
| 19 | 2.1 | **Pages de l'application** |  | 22d | 2022-02-02 A | 2022-03-03 |  | 77% | 5.15d | 2022-02-02 | 2022-03-03 | 22d | 2022-02-02 | 2022-03-03 | 29d |  |
| 20 | 2.1.1 | Maquetter une page général de l'application |  | 5d | 2022-02-03 A | 2022-02-09 A | 21 | 100% |  | 2022-02-03 | 2022-02-09 | 5d | 2022-02-03 | 2022-02-09 |  | finish no earlier than 2022-02-11 |
| 21 | 2.1.2 | Déterminer le nombre de pages nécessaires à l'application |  | 1d | 2022-02-02 A | 2022-02-02 A |  | 100% |  | 2022-02-02 | 2022-02-02 | 1d | 2022-02-02 | 2022-02-02 |  |  |
| 22 | 2.1.3 | Créer et coder des pages simples pour tester le back end |  | 7d | 2022-02-03 A | 2022-02-11 | 21 | 90% | 0.7d | 2022-02-03 | 2022-02-11 | 7d | 2022-02-03 | 2022-02-11 | 43d |  |
| 23 | 2.1.4 | Associer des droits aux profils utilisateurs |  | 1d | 2022-02-16 A | 2022-02-16 A | 22, 5 | 100% |  | 2022-02-16 | 2022-02-16 | 1d | 2022-02-16 | 2022-02-16 |  |  |
| 24 | 2.1.5 | Effectuer tout les tests nécessaires vérifiant l'association front et back ends |  | 2d | 2022-03-02 | 2022-03-03 | 25 |  |  | 2022-02-17 | 2022-02-18 | 2d | 2022-02-17 | 2022-02-18 | 0d |  |
| 25 | 2.1.6 | Recoder les pages en fonction de la maquette |  | 9d | 2022-02-17 A | 2022-03-01 | 23, 31 | 65% | 3.15d | 2022-02-17 | 2022-03-03 | 9d | 2022-02-21 | 2022-03-03 | 0d |  |

| ID | WBS | Task | Duration | Start | Finish | Predecessors | Baseline start | Baseline finish | Baseline duration | Baseline 1 start | Baseline 1 finish | Total slack | Constraint |
| --- | --- | --- | --- | --- | --- | --- | --- | --- | --- | --- | --- | --- | --- |
| 26 | 2.2 | **Visualisation du camping** | 14d | 2022-03-04 | 2022-03-23 |  | 2022-02-21 | 2022-03-10 | 14d | 2022-02-21 | 2022-03-10 | 0d |  |
| 27 | 2.2.1 | Maquetter le plan de visualisation à concevoir en équipe | 2d | 2022-03-04 | 2022-03-07 | 24 | 2022-02-21 | 2022-02-22 | 2d | 2022-02-21 | 2022-02-22 | 0d | start no earlier than 2022-02-17 |
| 28 | 2.2.2 | Choisir un outil approprié | 1d | 2022-03-08 | 2022-03-08 | 27 | 2022-02-23 | 2022-02-23 | 1d | 2022-02-23 | 2022-02-23 | 0d |  |
| 29 | 2.2.3 | Développer le module plan du camping | 8d | 2022-03-09 | 2022-03-18 | 28 | 2022-02-24 | 2022-03-07 | 8d | 2022-02-24 | 2022-03-07 | 0d | finish no earlier than 2022-02-18 |
| 30 | 2.2.4 | Intégrer le module plan du camping à l'interface utilisateur | 1d | 2022-03-21 | 2022-03-21 | 29 | 2022-03-08 | 2022-03-08 | 1d | 2022-03-08 | 2022-03-08 | 0d |  |
| 31 | 2.2.5 | Effectuer tout les tests nécessaires vérifiant l'association front et back ends | 2d | 2022-03-22 | 2022-03-23 | 25, 30 | 2022-03-09 | 2022-03-10 | 2d | 2022-03-09 | 2022-03-10 | 0d | start no earlier than 2022-03-07 |
| 32 | 3 | **Documentation** | 7d | 2022-03-24 | 2022-03-31 | 31, 20 | 2022-03-11 | 2022-03-28 | 13d | 2022-03-21 | 2022-03-28 | 0d |  |
| 33 | 3.1 | **Documentation utilisateur** | 3d | 2022-03-24 | 2022-03-26 |  | 2022-03-11 | 2022-03-15 | 3d | 2022-03-21 | 2022-03-23 | 0d |  |
| 34 | 3.1.1 | Lister les différents types utilisateur | 1d | 2022-03-24 | 2022-03-24 |  | 2022-03-11 | 2022-03-11 | 1d | 2022-03-21 | 2022-03-21 | 0d |  |
| 35 | 3.1.2 | Lister les différences entre les documentations | 1d | 2022-03-24 | 2022-03-24 |  | 2022-03-11 | 2022-03-11 | 1d | 2022-03-21 | 2022-03-21 | 0d |  |
| 36 | 3.1.3 | Rédiger les documentations | 2d | 2022-03-25 | 2022-03-26 | 35, 34 | 2022-03-14 | 2022-03-15 | 2d | 2022-03-22 | 2022-03-23 | 0d |  |
| 37 | 3.2 | **Documentation technique** | 2d | 2022-03-28 | 2022-03-29 | 33 | 2022-03-16 | 2022-03-25 | 8d | 2022-03-23 | 2022-03-25 | 0d |  |
| 38 | 3.2.1 | Lister les fonctions nécessaires à la compréhension et la maintenance du code | 1d | 2022-03-28 | 2022-03-28 |  | 2022-03-16 | 2022-03-16 | 1d | 2022-03-23 | 2022-03-23 | 0d |  |
| 39 | 3.2.2 | Rédiger une documentation adéquate à la maintenance souhaitée | 1d | 2022-03-29 | 2022-03-29 | 38 | 2022-03-25 | 2022-03-25 | 1d | 2022-03-25 | 2022-03-25 | 0d | finish no earlier than 2022-03-25 |
| 40 | 3.3 | **Finalisation de la documentation** | 2d | 2022-03-30 | 2022-03-31 | 37 | 2022-03-26 | 2022-03-28 | 2d | 2022-03-26 | 2022-03-28 | 0d |  |
| 41 | 3.3.1 | Relire et corriger les différentes documentations | 2d | 2022-03-30 | 2022-03-31 |  | 2022-03-26 | 2022-03-28 | 2d | 2022-03-26 | 2022-03-28 | 0d | finish no earlier than 2022-03-28 |
| 42 | 4 | **Deploiement** | 8d | 2022-04-01 | 2022-04-12 | 32 | 2022-03-29 | 2022-04-07 | 8d | 2022-03-29 | 2022-04-08 | 0d |  |
| 43 | 4.1 | **Mettre en place l'application** | 2d | 2022-04-01 | 2022-04-04 |  | 2022-03-29 | 2022-03-30 | 2d | 2022-03-29 | 2022-03-30 | 0d |  |
| 44 | 4.1.1 | Mettre en place l'application en production | 2d | 2022-04-01 | 2022-04-04 |  | 2022-03-29 | 2022-03-30 | 2d | 2022-03-29 | 2022-03-30 | 0d |  |
| 45 | 4.2 | **Application déployée** | 2d | 2022-04-05 | 2022-04-06 | 43 | 2022-03-31 | 2022-04-01 | 2d | 2022-03-31 | 2022-04-01 | 0d |  |
| 46 | 4.2.1 | Déployer la solution dans les locaux de M.Campo | 2d | 2022-04-05 | 2022-04-06 |  | 2022-03-31 | 2022-04-01 | 2d | 2022-03-31 | 2022-04-01 | 0d |  |
| 47 | 4.3 | **Tutoriels** | 2d | 2022-04-07 | 2022-04-08 | 45 | 2022-04-04 | 2022-04-05 | 2d | 2022-04-04 | 2022-04-05 | 0d |  |
| 48 | 4.3.1 | Créer des tutoriels vidéos pour l'utilisation de l'application | 1d | 2022-04-07 | 2022-04-07 |  | 2022-04-04 | 2022-04-04 | 1d | 2022-04-04 | 2022-04-04 | 0d |  |
| 49 | 4.3.2 | Diffuser les tutoriels aux stagiaires et à M. Campo | 1d | 2022-04-08 | 2022-04-08 | 48 | 2022-04-05 | 2022-04-05 | 1d | 2022-04-05 | 2022-04-05 | 0d |  |

| ID | WBS | Task | Duration | Start | Finish | Predecessors | Baseline start | Baseline finish | Baseline duration | Baseline 1 start | Baseline 1 finish | Total slack |
| --- | --- | --- | --- | --- | --- | --- | --- | --- | --- | --- | --- | --- |
| 50 | 4.4 | **Formation des stagiaires** | 2d | 2022-04-11 | 2022-04-12 | 47 | 2022-04-06 | 2022-04-07 | 2d | 2022-04-06 | 2022-04-07 | 0d |
| 51 | 4.4.1 | Identifier les difficultés possibles | 1d | 2022-04-11 | 2022-04-11 |  | 2022-04-06 | 2022-04-06 | 1d | 2022-04-06 | 2022-04-06 | 1d |
| 52 | 4.4.2 | Former les stagiaires et M. Campo à l'utilisation de l'application | 2d | 2022-04-11 | 2022-04-12 |  | 2022-04-06 | 2022-04-07 | 2d | 2022-04-06 | 2022-04-07 | 0d |
